# Engineering Project 3 Plan

How a schedule from MS Project changed from version to version. A marks actual dates.

## Version 1 (saved 2022-04-07, file Engineering_Project_3_Plan.mpp)

| ID | WBS | Task | Duration | Start | Finish | Predecessors | Complete | Total float | Constraint |
| --- | --- | --- | --- | --- | --- | --- | --- | --- | --- |
| 1 |  | External Dependencies | 70d | 2022-04-04 | 2022-06-23 |  |  |  |  |
| 2 | 2 | **Analysis** | 15d | 2022-04-04 A | 2022-04-16 |  | 27% |  |  |
| 3 |  | Scope Definition | 1d | 2022-04-04 A | 2022-04-04 A |  | 100% |  | start no earlier than 2022-04-04 |
| 4 |  | Making Project Plan | 3d | 2022-04-05 A | 2022-04-07 | 3 | 75% | 0d | finish no earlier than 2022-04-07 |
| 5 |  | Commercializiation & Researching Marketplaces | 7d | 2022-04-08 | 2022-04-15 | 4 |  | 0d | finish no earlier than 2022-04-14 |
| 6 |  | Financial situation calculations | 1d | 2022-04-16 | 2022-04-16 | 5 |  | 0d | finish no earlier than 2022-04-16 |
| 7 | 3 | **Development Stages** | 33d | 2022-04-18 | 2022-05-25 | 6 |  | 0d |  |
| 8 | 3.1 | **Client UI Design Stages** | 16d | 2022-04-18 | 2022-05-05 |  |  |  |  |
| 9 | 3.1.1 | **Installations** | 5d | 2022-04-18 | 2022-04-22 |  |  |  |  |
| 10 |  | Android Studio Configurations | 2d | 2022-04-18 | 2022-04-19 |  |  | 0d | finish no earlier than 2022-04-19 |
| 11 |  | Virtual Machine Configurations | 2d | 2022-04-20 | 2022-04-21 | 10 |  | 0d |  |
| 12 |  | Github Repository Configurations | 1d | 2022-04-22 | 2022-04-22 | 11 |  | 0d |  |
| 13 | 3.1.2 | **Login & Signup Page Design** | 2d | 2022-04-23 | 2022-04-25 | 12 |  |  |  |
| 14 |  | Login Page Design | 1d | 2022-04-23 | 2022-04-23 |  |  | 0d |  |
| 15 |  | Signup Page Design | 1d | 2022-04-25 | 2022-04-25 | 14 |  | 0d |  |
| 16 | 3.1.3 | **General App Sections** | 9d | 2022-04-26 | 2022-05-05 | 15 |  |  |  |
| 17 |  | Group Chat Section Design | 3d | 2022-04-26 | 2022-04-28 |  |  | 0d |  |
| 18 |  | Personal Chat Section Design | 3d | 2022-04-29 | 2022-05-02 | 17 |  | 0d |  |
| 19 |  | Contacts List Section Design | 1d | 2022-05-03 | 2022-05-03 | 18 |  | 0d |  |
| 20 |  | Profile Settings Section Design | 1d | 2022-05-04 | 2022-05-04 | 19 |  | 0d |  |
| 21 |  | Message Requests List Section Design | 1d | 2022-05-05 | 2022-05-05 | 20 |  | 0d |  |
| 22 | 3.2 | **CFS** | 12d | 2022-05-06 | 2022-05-18 | 21 |  |  |  |
| 23 | 3.2.1 | **Account Management** | 6d | 2022-05-06 | 2022-05-12 |  |  |  |  |
| 24 |  | Login & Signup Functions Development | 3d | 2022-05-06 | 2022-05-09 |  |  | 0d |  |
| 25 |  | Logout Function Development | 2d | 2022-05-10 | 2022-05-11 | 24 |  | 0d |  |
| 26 |  | Phone Number Login Development | 1d | 2022-05-12 | 2022-05-12 | 25 |  | 0d |  |
| 27 | 3.2.2 | **Message Module** | 6d | 2022-05-13 | 2022-05-18 | 26 |  |  |  |
| 28 |  | Message Sending Function | 1d | 2022-05-13 | 2022-05-13 |  |  | 0d |  |
| 29 |  | Message Delivering Function | 1d | 2022-05-14 | 2022-05-14 | 28 |  | 0d |  |
| 30 |  | Message Request Function | 1d | 2022-05-16 | 2022-05-16 | 29 |  | 0d |  |
| 31 |  | Group Chat Activity Development | 1d | 2022-05-17 | 2022-05-17 | 30 |  | 0d |  |
| 32 |  | Online / Offline Status Function Development | 1d | 2022-05-18 | 2022-05-18 | 31 |  | 0d |  |
| 33 | 3.3 | **Firebase DB Design** | 6d | 2022-05-19 | 2022-05-25 | 32 |  |  |  |
| 34 |  | Logging User Account Informations | 2d | 2022-05-19 | 2022-05-20 |  |  | 0d |  |
| 35 |  | Logging Chat Data | 2d | 2022-05-21 | 2022-05-23 | 34 |  | 0d |  |
| 36 |  | Transferring Files | 2d | 2022-05-24 | 2022-05-25 | 35 |  | 0d |  |
| 37 | 4 | **Testing** | 5d | 2022-05-26 | 2022-05-31 | 36 |  |  |  |
| 38 | 4.1 | **UI Testing** | 2d | 2022-05-26 | 2022-05-27 |  |  |  |  |
| 39 |  | Layout & Sizes Compatibility | 1d | 2022-05-26 | 2022-05-26 |  |  | 20d | start no earlier than 2022-05-26 |
| 40 |  | Colors Compatibility | 1d | 2022-05-27 | 2022-05-27 | 39 |  | 20d |  |
| 41 | 4.2 | **UX Testing** | 3d | 2022-05-28 | 2022-05-31 | 40 |  | 20d |  |
| 42 |  | Message Modules Controls | 1d | 2022-05-28 | 2022-05-28 |  |  | 20d | finish no earlier than 2022-04-08 |
| 43 |  | File Transmission Controls | 1d | 2022-05-30 | 2022-05-30 | 42 |  | 20d | finish no earlier than 2022-04-08 |
| 44 |  | Login & Logout Testing | 1d | 2022-05-31 | 2022-05-31 | 43 |  | 20d | finish no earlier than 2022-04-09 |

## Version 2 (saved 2022-04-21, file Engineering Project 3 Plan.mpp)

Last finish stays 2022-06-23. Complete tasks 1 → 4.

Changed:

| ID | Task | Start | Finish | Complete | Total float | Predecessors | Other |
| --- | --- | --- | --- | --- | --- | --- | --- |
| 2 | **Analysis** |  |  | 27% → 100% |  |  |  |
| 3 | Scope Definition |  |  |  |  |  | resources Alperen Demirtürkoğlu; Mert Altuntaş; Kaan Çeliktaş → Alperen Demirtürkoğlu [25%]; Mert Altuntaş [25%]; Kaan Çeliktaş [50%] |
| 4 | Making Project Plan |  | 2022-04-07 A | 75% → 100% | 0d → none |  | resources Alperen Demirtürkoğlu; Mert Altuntaş; Kaan Çeliktaş → Alperen Demirtürkoğlu [25%]; Mert Altuntaş [25%]; Kaan Çeliktaş [50%] |
| 5 | Commercializiation & Researching Marketplaces | 2022-04-08 A | 2022-04-15 A | 0% → 100% | 0d → none |  |  |
| 6 | Financial situation calculations | 2022-04-16 A | 2022-04-16 A | 0% → 100% | 0d → none |  |  |
| 10 | Android Studio Configurations |  |  |  |  |  | resources Mert Altuntaş; Alperen Demirtürkoğlu; Kaan Çeliktaş → Mert Altuntaş [50%]; Alperen Demirtürkoğlu [25%]; Kaan Çeliktaş [25%] |
| 11 | Virtual Machine Configurations |  |  |  |  |  | resources Alperen Demirtürkoğlu; Mert Altuntaş; Kaan Çeliktaş → Alperen Demirtürkoğlu [25%]; Mert Altuntaş [50%]; Kaan Çeliktaş [25%] |
| 12 | Github Repository Configurations |  |  |  |  |  | resources Alperen Demirtürkoğlu; Mert Altuntaş; Kaan Çeliktaş → Alperen Demirtürkoğlu [25%]; Mert Altuntaş [50%]; Kaan Çeliktaş [25%] |
| 17 | Group Chat Section Design |  |  |  |  |  | resources Alperen Demirtürkoğlu; Kaan Çeliktaş → Alperen Demirtürkoğlu [25%]; Kaan Çeliktaş [75%] |
| 18 | Personal Chat Section Design |  |  |  |  |  | resources Alperen Demirtürkoğlu; Kaan Çeliktaş → Alperen Demirtürkoğlu [25%]; Kaan Çeliktaş [75%] |
| 19 | Contacts List Section Design |  |  |  |  |  | resources Alperen Demirtürkoğlu; Kaan Çeliktaş → Alperen Demirtürkoğlu [50%]; Kaan Çeliktaş [50%] |
| 20 | Profile Settings Section Design |  |  |  |  |  | resources Alperen Demirtürkoğlu; Kaan Çeliktaş → Alperen Demirtürkoğlu [50%]; Kaan Çeliktaş [50%] |
| 24 | Login & Signup Functions Development |  |  |  |  |  | resources Mert Altuntaş → Mert Altuntaş [75%]; Kaan Çeliktaş [25%] |
| 25 | Logout Function Development |  |  |  |  |  | resources Mert Altuntaş → Mert Altuntaş [75%]; Kaan Çeliktaş [25%] |
| 26 | Phone Number Login Development |  |  |  |  |  | resources Mert Altuntaş → Mert Altuntaş [75%]; Alperen Demirtürkoğlu [25%] |
| 28 | Message Sending Function |  |  |  |  |  | resources Mert Altuntaş; Kaan Çeliktaş → Mert Altuntaş [50%]; Kaan Çeliktaş [50%] |
| 29 | Message Delivering Function |  |  |  |  |  | resources Mert Altuntaş; Kaan Çeliktaş → Mert Altuntaş [50%]; Kaan Çeliktaş [50%] |
| 30 | Message Request Function |  |  |  |  |  | resources Mert Altuntaş; Kaan Çeliktaş → Mert Altuntaş [50%]; Kaan Çeliktaş [50%] |
| 31 | Group Chat Activity Development |  |  |  |  |  | resources Alperen Demirtürkoğlu; Mert Altuntaş → Alperen Demirtürkoğlu [25%]; Mert Altuntaş [75%] |
| 32 | Online / Offline Status Function Development |  |  |  |  |  | resources Alperen Demirtürkoğlu; Mert Altuntaş → Alperen Demirtürkoğlu [25%]; Mert Altuntaş [75%] |
| 34 | Logging User Account Informations |  |  |  |  |  | resources Mert Altuntaş → Mert Altuntaş [50%]; Kaan Çeliktaş [50%] |
| 35 | Logging Chat Data |  |  |  |  |  | resources Mert Altuntaş → Mert Altuntaş [50%]; Kaan Çeliktaş [50%] |
| 36 | Transferring Files |  |  |  |  |  | resources Mert Altuntaş → Mert Altuntaş [50%]; Kaan Çeliktaş [50%] |
| 39 | Layout & Sizes Compatibility |  |  |  | 20d → 23d | none → 36 |  |
| 41 | **UX Testing** | 2022-05-28 → 2022-05-26 (-2d) | 2022-05-31 → 2022-05-28 (-3d) |  | 20d → 22d | 40 → none |  |
| 42 | Message Modules Controls | 2022-05-28 → 2022-05-26 (-2d) | 2022-05-28 → 2022-05-26 (-2d) |  | 20d → 22d | none → 36 |  |
| 43 | File Transmission Controls | 2022-05-30 → 2022-05-27 (-3d) | 2022-05-30 → 2022-05-27 (-3d) |  | 20d → 22d |  |  |
| 44 | Login & Logout Testing | 2022-05-31 → 2022-05-28 (-3d) | 2022-05-31 → 2022-05-28 (-3d) |  | 20d → 22d |  |  |
